# 3SS_Phase2_Milestones3-4

Schedule from MS Project, 2012-10-01 to 2013-03-05, status date 2012-10-04, 6 hours a day, costs in $, A marks actual dates.
Hewlett-Packard Company

## Calendars

- 6-Hour Work Days: Mon-Fri 10:00-16:00; Sat-Sun off. Exceptions (off unless hours are given): 2012-11-22 to 2012-11-23 (Thanksgiving), 2012-12-24 to 2013-01-01 (Christmas).

## Resources

| Resource | Rate |
| --- | --- |
| Richard Ranft | 22.68 |
| Kyle Miller | 39.72 |
| Ben Steffen | 23.75 |
| Michael Perry | 46.21 |
| Melv May | 34.89 |
| Geoff Beckstrom | 41.01 |
| Phill Belanger | 34.21 |
| Jesse Oliger | 32.65 |
| John Shuman | 37.22 |
| Jehnean Jablonski | 32.55 |
| Programmer II A |  |
| Programmer II B |  |
| Jon Williams | 24.83 |
| Zach Gambino | 45.01 |
| Ray Mitchell | 47.29 |
| Outsource |  |

## Schedule

| ID | WBS | Task | Duration | Start | Finish | Complete | Remaining | Total slack | Free slack | Constraint | Resources | Work | Actual work | Cost | Actual cost | JIRA Ticket |
| --- | --- | --- | --- | --- | --- | --- | --- | --- | --- | --- | --- | --- | --- | --- | --- | --- |
| 1 | 1 | **Milestone 3a: Core/Physics Launcher** | 38d? | 2012-10-01 A | 2012-11-21 | 54% | 17.48d? | 60d |  |  |  | 532.7h | 287.68h | 20,866.01 | 11,062.92 |  |
| 2 | 1.1 | **Art** | 2d | 2012-10-01 A | 2012-10-02 A | 100% |  |  |  |  |  | 12h | 12h | 410.52 | 410.52 |  |
| 3 | 1.1.1 | Casino Blackjack Update | 2d | 2012-10-01 A | 2012-10-02 A | 100% |  |  |  |  | Phill Belanger | 12h | 12h | 410.52 | 410.52 |  |
| 4 | 1.2 | **Code** | 26.59d? | 2012-10-01 A | 2012-11-06 | 88% | 3.28d? | 45.49d | 0d |  |  | 283.7h | 248.68h | 10,939.52 | 9,509.13 |  |
| 5 | 1.2.1 | **Core** | 26.59d? | 2012-10-01 A | 2012-11-06 | 89% | 3.03d? | 45.49d |  |  |  | 67.64h | 59.94h | 2,824.08 | 2,468.26 |  |
| 6 | 1.2.1.1 | Game Installer - PC | 4.44d | 2012-10-08 A | 2012-10-12 A | 100% |  |  |  | start no earlier than 2012-10-08 | Melv May | 26.64h | 26.64h | 929.47 | 929.47 | MMGDCORE-643 |
| 7 | 1.2.1.2 | Game Installer - Mac | 2d | 2012-10-01 A | 2012-11-01 | 75% | 0.5d | 48.56d |  |  | Michael Perry | 12h | 9h | 554.52 | 415.89 | MMGDCORE-644 |
| 8 | 1.2.1.3 | Integrate Open Sans Font into Editor Installers | 1d | 2012-10-17 A | 2012-10-29 | 75% | 0.25d | 51.46d |  | start no earlier than 2012-10-17 | Michael Perry | 6h | 4.5h | 277.26 | 207.94 | MMGDCORE-654 |
| 9 | 1.2.1.4 | Add Game Fonts to Game Installations | 1d | 2012-10-25 A | 2012-11-02 | 75% | 0.25d | 47.31d |  | start no earlier than 2012-10-25 | Michael Perry | 6h | 4.5h | 277.26 | 207.94 | MMGDCORE-655 |
| 10 | 1.2.1.5 | Collision Editor Cleanup | 2.83d? | 2012-10-25 A | 2012-11-06 | 90% | 0.28d? | 45.49d |  | start no earlier than 2012-10-25 | Michael Perry | 17h | 15.3h | 785.57 | 707.01 | TSSPL-456 |
| 11 | 1.2.2 | **Editor General** | 25.15d? | 2012-10-01 A | 2012-11-05 | 91% | 2.29d? | 46.92d | 0d |  |  | 163.62h | 148.71h | 6,277.9 | 5,695.99 |  |
| 12 | 1.2.2.1 | Login Screen | 1.33d | 2012-10-02 A | 2012-11-01 | 90% | 0.13d | 49.06d |  |  | Michael Perry | 7.98h | 7.18h | 368.76 | 331.86 | MMGDCORE-595 |
| 13 | 1.2.2.2 | Home Screen | 2d | 2012-10-01 A | 2012-10-17 | 95% | 0.1d | 59.77d |  |  | Michael Perry | 12h | 11.4h | 554.52 | 526.79 | MMGDCORE-596 |
| 14 | 1.2.2.3 | Avatar Pop-Up | 2d | 2012-10-17 A | 2012-10-19 | 95% | 0.1d | 57.7d |  | start no earlier than 2012-10-17 | Michael Perry | 12h | 11.4h | 554.52 | 526.79 | MMGDCORE-588 |
| 15 | 1.2.2.4 | Template Games List | 0.61d | 2012-10-04 A | 2012-10-19 | 95% | 0.03d | 57.67d |  |  | Michael Perry | 3.66h | 3.48h | 169.13 | 160.66 | MMGDCORE-598 |
| 16 | 1.2.2.5 | Game Options Pop-Up | 2d | 2012-10-10 A | 2012-10-24 A | 100% |  |  |  | start no earlier than 2012-10-08 | Michael Perry | 12h | 12h | 554.52 | 554.52 | MMGDCORE-591 |
| 17 | 1.2.2.6 | New Game Pop-Up | 1d? | 2012-10-16 A | 2012-10-25 A | 100% |  |  |  | start no earlier than 2012-10-08 | Michael Perry | 6h | 6h | 277.26 | 277.26 | MMGDCORE-590 |
| 18 | 1.2.2.7 | Announcements View | 2d? | 2012-10-12 A | 2012-11-02 | 50% | 1d? | 47.51d |  | start no earlier than 2012-10-08 | Michael Perry | 12h | 6h | 554.52 | 277.26 | MMGDCORE-597 |
| 19 | 1.2.2.8 | All Games GUI | 1d? | 2012-10-16 A | 2012-10-29 | 95% | 0.05d? | 51.97d |  | start no earlier than 2012-10-08 | Michael Perry | 6h | 5.7h | 277.26 | 263.4 | MMGDCORE-599 |
| 20 | 1.2.2.9 | Web Pop-Up | 0.67d | 2012-10-01 A | 2012-10-01 | 95% | 0.03d | 71.4d |  |  | Kyle Miller | 4.02h | 3.82h | 159.67 | 151.66 | MMGDCORE-589 |
| 21 | 1.2.2.10 | Sprite Sheet Tool Update | 3.06d | 2012-10-02 A | 2012-11-05 | 95% | 0.15d | 46.92d |  |  | Kyle Miller | 18.36h | 17.44h | 729.26 | 692.78 | MMGDCORE-581 |
| 22 | 1.2.2.11 | Animation Tool Update | 2.44d | 2012-10-01 A | 2012-10-23 | 95% | 0.12d | 55.5d |  |  | Richard Ranft | 14.64h | 13.91h | 332.04 | 315.44 | MMGDCORE-582 |
| 23 | 1.2.2.12 | Audio Tool Update | 1.83d | 2012-10-02 A | 2012-10-17 | 75% | 0.46d | 59.15d |  |  | Richard Ranft | 10.98h | 8.23h | 249.03 | 186.77 | MMGDCORE-583 |
| 24 | 1.2.2.13 | Publish Game | 1.22d | 2012-10-04 A | 2012-10-23 | 95% | 0.06d | 55.22d |  |  | Richard Ranft | 7.32h | 6.95h | 166.02 | 157.7 | MMGDCORE-584 |
| 25 | 1.2.2.14 | Delete Prompt | 1.22d | 2012-10-02 A | 2012-10-23 A | 100% |  |  |  |  | Richard Ranft | 7.32h | 7.32h | 166.02 | 166.02 | MMGDCORE-586 |
| 26 | 1.2.2.15 | Color Picker | 3.67d | 2012-10-01 A | 2012-10-05 | 95% | 0.18d | 67.4d |  |  | Kyle Miller | 22.02h | 20.92h | 874.63 | 830.88 | MMGDCORE-587 |
| 27 | 1.2.2.16 | Zoom Pop-Up | 1.22d | 2012-10-04 A | 2012-10-05 | 95% | 0.06d | 67.85d |  |  | Kyle Miller | 7.32h | 6.95h | 290.75 | 276.19 | MMGDCORE-592 |

| ID | WBS | Task | Duration | Start | Finish | Predecessors | Complete | Remaining | Total slack | Free slack | Constraint | Resources | Work | Actual work | Cost | Actual cost | JIRA Ticket |
| --- | --- | --- | --- | --- | --- | --- | --- | --- | --- | --- | --- | --- | --- | --- | --- | --- | --- |
| 28 | 1.2.3 | **Physics Launcher Template** | 25d | 2012-10-01 A | 2012-11-02 |  | 76% | 5.91d | 47.07d |  |  |  | 52.44h | 40.04h | 1,837.54 | 1,344.88 |  |
| 29 | 1.2.3.1 | Worlds Tool Update | 1.06d | 2012-10-11 A | 2012-10-12 A |  | 100% |  |  |  |  | Richard Ranft | 6.36h | 6.36h | 144.24 | 144.24 | TSSPL-341 |
| 30 | 1.2.3.2 | Builder Tool Update | 5d | 2012-10-01 A | 2012-11-02 |  | 60% | 2d | 47.07d |  |  | Kyle Miller | 30h | 18h | 1,191.6 | 714.96 | TSSPL-124 |
| 31 | 1.2.3.3 | Launcher Tool Update | 0.67d | 2012-10-02 A | 2012-10-02 |  | 95% | 0.03d | 70.4d |  |  | Kyle Miller | 4.02h | 3.82h | 159.67 | 151.66 | TSSPL-112 |
| 32 | 1.2.3.4 | Projectiles Tool Update | 0.67d | 2012-10-01 A | 2012-10-17 A |  | 100% |  |  |  |  | Richard Ranft | 4.02h | 4.02h | 91.17 | 91.17 |  |
| 33 | 1.2.3.5 | Objects Tool Update | 0.67d | 2012-10-08 A | 2012-10-08 |  | 95% | 0.03d | 66.4d |  |  | Kyle Miller | 4.02h | 3.82h | 159.67 | 151.66 |  |
| 34 | 1.2.3.6 | Interface Tool Update | 0.67d | 2012-10-03 A | 2012-10-23 A |  | 100% |  |  |  |  | Richard Ranft | 4.02h | 4.02h | 91.17 | 91.17 |  |
| 35 | 1.3 | **Docs** | 11d | 2012-10-24 A | 2012-11-07 |  | 38% | 6.88d | 51d | 0d |  |  | 48h | 18h | 1,968.48 | 738.18 |  |
| 36 | 1.3.1 | **Overview Page** | 11d | 2012-10-24 A | 2012-11-07 |  | 38% | 6.88d | 51d | 0d |  |  | 48h | 18h | 1,968.48 | 738.18 |  |
| 37 | 1.3.1.1 | Create Hints and Tips and Tooltips for General Editor | 3d | 2012-10-24 A | 2012-11-07 |  | 50% | 1.5d | 51d |  |  | Geoff Beckstrom | 18h | 9h | 738.18 | 369.09 | MMGDCORE-611 |
| 38 | 1.3.1.2 | Create Hints and Tips and Tooltips for Physics Launcher Template | 5d | 2012-10-26 A | 2012-11-06 |  | 30% | 3.5d | 52.5d |  | start no earlier than 2012-10-17 | Geoff Beckstrom | 30h | 9h | 1,230.3 | 369.09 | TSSPL-433 |
| 39 | 1.4 | **Web** | 1.5d | 2012-10-01 A | 2012-10-02 A |  | 100% |  |  |  |  |  | 9h | 9h | 405.09 | 405.09 |  |
| 40 | 1.4.1 | **Client Items** | 1.5d | 2012-10-01 A | 2012-10-02 A |  | 100% |  |  |  |  |  | 9h | 9h | 405.09 | 405.09 |  |
| 41 | 1.4.1.1 | Login Homescreen News | 1d | 2012-10-01 A | 2012-10-01 A |  | 100% |  |  |  |  | Zach Gambino | 6h | 6h | 270.06 | 270.06 | MMGDCORE-640 |
| 42 | 1.4.1.2 | User Details XML | 0.5d | 2012-10-02 A | 2012-10-02 A |  | 100% |  |  |  |  | Zach Gambino | 3h | 3h | 135.03 | 135.03 | MMGDCORE-641 |
| 43 | 1.5 | **QA/Reaction** | 5d? | 2012-11-08 | 2012-11-14 | 2, 4, 39, 36, 35 |  |  | 51d | 0d |  |  | 150h |  | 5,723.7 |  |  |
| 44 | 1.5.1 | Physics Launcher - Core Tools Full Pass | 5d | 2012-11-08 | 2012-11-14 |  |  |  | 60d |  |  | Ray Mitchell | 30h |  | 1,418.7 |  |  |
| 45 | 1.5.2 | Physics Launcher - Core Tools Full Pass | 5d? | 2012-11-08 | 2012-11-14 |  |  |  | 60d |  |  | Kyle Miller | 30h |  | 1,191.6 |  |  |
| 46 | 1.5.3 | Physics Launcher - Core Tools Full Pass | 5d? | 2012-11-08 | 2012-11-14 |  |  |  | 51d | 0d |  | Richard Ranft | 30h |  | 680.4 |  |  |
| 47 | 1.5.4 | Physics Launcher - Core Tools Full Pass | 5d? | 2012-11-08 | 2012-11-14 |  |  |  | 60d |  | start no earlier than 2012-10-08 | Michael Perry | 30h |  | 1,386.3 |  |  |
| 48 | 1.5.5 | Physics Launcher - Core Tools Full Pass | 5d? | 2012-11-08 | 2012-11-14 |  |  |  | 60d |  |  | Melv May | 30h |  | 1,046.7 |  |  |
| 49 | 1.6 | **Usability Testing** | 5d | 2012-11-15 | 2012-11-21 | 43 |  |  | 60d |  |  |  | 30h |  | 1,418.7 |  |  |
| 50 | 1.6.1 | Full review | 5d | 2012-11-15 | 2012-11-21 |  |  |  | 60d |  |  | Ray Mitchell | 30h |  | 1,418.7 |  |  |
| 51 | 2 | **Milestone 3b: 3SS Website Reskin** | 92.19d? | 2012-10-01 A | 2013-02-19 |  | 6% | 86.21d? | 10.56d |  |  |  | 907.7h | 62h | 31,599.08 | 1,920.58 |  |
| 52 | 2.1 | **Art** | 86.44d | 2012-10-02 A | 2013-02-12 |  | 3% | 83.82d | 10.56d | 0d |  |  | 593.7h | 18h | 19,920.04 | 585.9 |  |
| 53 | 2.1.1 | **Website Re-skin** | 85.5d | 2012-10-02 A | 2013-02-11 |  | 9% | 77.84d | 11.5d | 0d |  |  | 201h | 18h | 6,542.55 | 585.9 |  |
| 54 | 2.1.1.1 | Homepage | 1d | 2012-10-02 A | 2012-10-02 A | 84 | 100% |  |  |  |  | Jehnean Jablonski | 6h | 6h | 195.3 | 195.3 |  |
| 55 | 2.1.1.2 | Marketplace | 0.5d | 2012-10-03 A | 2012-10-03 A | 86 | 100% |  |  |  |  | Jehnean Jablonski | 3h | 3h | 97.65 | 97.65 |  |
| 56 | 2.1.1.3 | Forum Pages | 8d | 2012-10-03 A | 2013-02-08 | 92 | 19% | 6.5d | 12.5d | 0d |  | Jehnean Jablonski | 48h | 9h | 1,562.4 | 292.95 |  |
| 57 | 2.1.1.4 | Help | 1d | 2013-02-08 | 2013-02-11 | 97 |  |  | 11.5d | 0d | start no earlier than 2012-10-17 | Jehnean Jablonski | 6h |  | 195.3 |  |  |
| 58 | 2.1.1.5 | Docs Pages | 3d | 2012-11-01 | 2012-11-05 | 103 |  |  | 72d | 0d | start no earlier than 2012-11-01 | Jehnean Jablonski | 18h |  | 585.9 |  |  |
| 59 | 2.1.1.6 | News | 5d | 2012-11-06 | 2012-11-12 | 104 |  |  | 67d | 0d | start no earlier than 2012-11-01 | Jehnean Jablonski | 30h |  | 976.5 |  |  |
| 60 | 2.1.1.7 | Sign In | 0.5d | 2012-11-13 | 2012-11-13 | 105 |  |  | 66.5d | 0d |  | Jehnean Jablonski | 3h |  | 97.65 |  |  |
| 61 | 2.1.1.8 | Easy Access Sign Up | 0.5d | 2012-11-13 | 2012-11-13 | 106 |  |  | 66d | 0d |  | Jehnean Jablonski | 3h |  | 97.65 |  |  |
| 62 | 2.1.1.9 | Resend Activation | 1d | 2012-11-14 | 2012-11-14 | 107 |  |  | 65d | 0d |  | Jehnean Jablonski | 6h |  | 195.3 |  |  |
| 63 | 2.1.1.10 | Account Settings | 0.5d | 2012-11-15 | 2012-11-15 | 108 |  |  | 64.5d | 0d |  | Jehnean Jablonski | 3h |  | 97.65 |  |  |
| 64 | 2.1.1.11 | Recover Password | 0.5d | 2012-11-15 | 2012-11-15 | 109 |  |  | 64d | 0d |  | Jehnean Jablonski | 3h |  | 97.65 |  |  |
| 65 | 2.1.1.12 | About Us | 1d | 2012-11-16 | 2012-11-16 | 110 |  |  | 63d | 0d |  | Jehnean Jablonski | 6h |  | 195.3 |  |  |
| 66 | 2.1.1.13 | Profile | 1d | 2013-01-21 | 2013-01-21 | 111 |  |  | 26d | 0d |  | Jehnean Jablonski | 6h |  | 195.3 |  |  |
| 67 | 2.1.1.14 | Edit profile | 1d | 2012-11-19 | 2012-11-19 | 113 |  |  | 62d | 0d |  | Jehnean Jablonski | 6h |  | 195.3 |  |  |
| 68 | 2.1.1.15 | Contact Us | 1d | 2012-11-20 | 2012-11-20 | 116 |  |  | 61d | 0d |  | Jehnean Jablonski | 6h |  | 195.3 |  |  |
| 69 | 2.1.1.16 | Pricing | 1d | 2012-11-21 | 2012-11-21 | 117 |  |  | 60d | 0d |  | Jehnean Jablonski | 6h |  | 195.3 |  |  |
| 70 | 2.1.1.17 | Blog Pages | 5d | 2012-11-26 | 2012-11-30 | 118 |  |  | 55d | 0d |  | Jehnean Jablonski | 30h |  | 976.5 |  |  |
| 71 | 2.1.1.18 | Overview Page | 2d | 2012-12-03 | 2012-12-04 | 119 |  |  | 53d | 0d |  | Jehnean Jablonski | 12h |  | 390.6 |  |  |

| ID | WBS | Task | Duration | Start | Finish | Predecessors | Complete | Remaining | Total slack | Free slack | Constraint | Resources | Work | Actual work | Cost | Actual cost |
| --- | --- | --- | --- | --- | --- | --- | --- | --- | --- | --- | --- | --- | --- | --- | --- | --- |
| 72 | 2.1.2 | **Physics Launcher Art Pack** | 64.44d | 2012-11-01 | 2013-02-12 |  |  |  | 8.89d |  |  |  | 392.7h |  | 13,377.49 |  |
| 73 | 2.1.2.1 | Concept pre-production | 6.11d | 2012-11-01 | 2012-11-09 |  |  |  | 8.89d | 0d | start no earlier than 2012-11-01 | Phill Belanger | 36.66h |  | 1,254.14 |  |
| 74 | 2.1.2.2 | Background (4 parallaxing layers) | 21.67d | 2012-11-09 | 2012-12-12 | 73 |  |  | 47.22d |  |  | Phill Belanger | 130.02h |  | 4,447.98 |  |
| 75 | 2.1.2.3 | Projectile Asset | 6.11d | 2013-01-30 | 2013-02-07 | 73 |  |  | 13.89d |  |  | John Shuman | 36.66h |  | 1,364.49 |  |
| 76 | 2.1.2.4 | Projectile rig and skin | 2.67d | 2012-12-21 | 2013-01-03 | 73 |  |  | 38d |  |  | Jesse Oliger | 16.02h |  | 523.05 |  |
| 77 | 2.1.2.5 | Projectile animation | 2.67d | 2013-01-04 | 2013-01-08 | 73 |  |  | 35.33d |  |  | Jesse Oliger | 16.02h |  | 523.05 |  |
| 78 | 2.1.2.6 | Slingshot, gameplay asset creation | 3.33d | 2013-02-07 | 2013-02-12 | 73 |  |  | 10.56d |  |  | John Shuman | 19.98h |  | 743.66 |  |
| 79 | 2.1.2.7 | Gameplay asset rig, skin and animation | 3.33d | 2012-12-18 | 2012-12-21 | 73 |  |  | 40.67d |  |  | Jesse Oliger | 19.98h |  | 652.35 |  |
| 80 | 2.1.2.8 | GUI and menu concept pre-production | 4.89d | 2013-01-11 | 2013-01-18 | 73 |  |  | 27.33d |  |  | Phill Belanger | 29.34h |  | 1,003.72 |  |
| 81 | 2.1.2.9 | GUI and menu creation | 14.67d | 2012-12-05 | 2013-01-03 | 73 |  |  | 38.33d |  |  | Jehnean Jablonski | 88.02h |  | 2,865.05 |  |
| 82 | 2.2 | **Design** | 82.75d? | 2012-10-01 A | 2013-02-05 |  | 26% | 61.57d? | 20d |  |  |  | 125h | 32h | 3,103.75 | 794.56 |
| 83 | 2.2.1 | **Website Re-skin** | 82.75d? | 2012-10-01 A | 2013-02-05 |  | 26% | 61.57d? | 20d |  |  |  | 125h | 32h | 3,103.75 | 794.56 |
| 84 | 2.2.1.1 | Homepage | 0.25d | 2012-10-04 A | 2012-10-04 A |  | 100% |  |  |  |  | Jon Williams | 1.5h | 1.5h | 37.25 | 37.25 |
| 85 | 2.2.1.2 | Download Page | 1d? | 2013-01-21 | 2013-01-21 |  |  |  | 31d |  | start no earlier than 2012-10-25 | Jon Williams | 6h |  | 148.98 |  |
| 86 | 2.2.1.3 | **Marketplace** | 5d? | 2013-01-09 | 2013-01-15 | 84 |  |  | -63.08d | 0d |  |  | 30h |  | 744.9 |  |
| 87 | 2.2.1.3.1 | Marketplace | 1d? | 2013-01-09 | 2013-01-09 |  |  |  | -59.08d | 0d | start no earlier than 2012-10-25 | Jon Williams | 6h |  | 148.98 |  |
| 88 | 2.2.1.3.2 | Product List | 1d? | 2013-01-10 | 2013-01-10 |  |  |  | -60.08d | 0d | start no earlier than 2012-10-25 | Jon Williams | 6h |  | 148.98 |  |
| 89 | 2.2.1.3.3 | Product Page | 1d? | 2013-01-11 | 2013-01-11 |  |  |  | -61.08d | 0d | start no earlier than 2012-10-25 | Jon Williams | 6h |  | 148.98 |  |
| 90 | 2.2.1.3.4 | Search Results | 1d? | 2013-01-14 | 2013-01-14 |  |  |  | -62.08d | 0d | start no earlier than 2012-10-25 | Jon Williams | 6h |  | 148.98 |  |
| 91 | 2.2.1.3.5 | Product History | 1d? | 2013-01-15 | 2013-01-15 |  |  |  | -63.08d | 0d | start no earlier than 2012-10-25 | Jon Williams | 6h |  | 148.98 |  |
| 92 | 2.2.1.4 | **Forum Pages** | 74.75d? | 2012-10-05 A | 2013-01-30 | 86 | 18% | 61.16d? | -49.64d | 0d |  |  | 22h | 4h | 546.26 | 99.32 |
| 93 | 2.2.1.4.1 | Forums | 0.67d? | 2012-10-05 A | 2012-10-05 A |  | 100% |  |  |  |  | Jon Williams | 4h | 4h | 99.32 | 99.32 |
| 94 | 2.2.1.4.2 | Board Posts | 1d? | 2013-01-16 | 2013-01-16 |  |  |  | -39.64d | 0d |  | Jon Williams | 6h |  | 148.98 |  |
| 95 | 2.2.1.4.3 | Topic Post | 1d? | 2013-01-29 | 2013-01-29 |  |  |  | -48.64d | 0d |  | Jon Williams | 6h |  | 148.98 |  |
| 96 | 2.2.1.4.4 | Profile Find Content Results | 1d? | 2013-01-30 | 2013-01-30 |  |  |  | -49.64d | 0d |  | Jon Williams | 6h |  | 148.98 |  |

| ID | WBS | Task | Duration | Start | Finish | Predecessors | Complete | Remaining | Total slack | Free slack | Constraint | Resources | Work | Actual work | Cost | Actual cost | JIRA Ticket |
| --- | --- | --- | --- | --- | --- | --- | --- | --- | --- | --- | --- | --- | --- | --- | --- | --- | --- |
| 97 | 2.2.1.5 | **Help** | 77.75d? | 2012-10-08 A | 2013-02-05 | 92 | 14% | 66.64d? | 13d | 0d |  |  | 28h | 4h | 695.24 | 99.32 |  |
| 98 | 2.2.1.5.1 | Help | 0.67d? | 2012-10-08 A | 2012-10-08 A |  | 100% |  |  |  |  | Jon Williams | 4h | 4h | 99.32 | 99.32 |  |
| 99 | 2.2.1.5.2 | Getting Started | 1d? | 2013-01-31 | 2013-01-31 |  |  |  | 16d |  |  | Jon Williams | 6h |  | 148.98 |  |  |
| 100 | 2.2.1.5.3 | Assets | 1d? | 2013-02-01 | 2013-02-01 |  |  |  | 15d |  |  | Jon Williams | 6h |  | 148.98 |  |  |
| 101 | 2.2.1.5.4 | Template Specific | 1d? | 2013-02-04 | 2013-02-04 |  |  |  | 14d |  |  | Jon Williams | 6h |  | 148.98 |  |  |
| 102 | 2.2.1.5.5 | Publish Game | 1d? | 2013-02-05 | 2013-02-05 |  |  |  | 13d |  |  | Jon Williams | 6h |  | 148.98 |  |  |
| 103 | 2.2.1.6 | Docs Pages | 0.25d? | 2012-10-02 A | 2012-10-02 A | 97 | 100% |  |  |  |  | Jon Williams | 1.5h | 1.5h | 37.25 | 37.25 |  |
| 104 | 2.2.1.7 | News | 0.25d? | 2012-10-01 A | 2012-10-01 A | 97 | 100% |  |  |  |  | Jon Williams | 1.5h | 1.5h | 37.25 | 37.25 |  |
| 105 | 2.2.1.8 | Sign In | 0.25d? | 2012-10-02 A | 2012-10-02 A | 104 | 100% |  |  |  |  | Jon Williams | 1.5h | 1.5h | 37.25 | 37.25 |  |
| 106 | 2.2.1.9 | Easy Access Sign Up | 0.25d? | 2012-10-03 A | 2012-10-03 A | 105 | 100% |  |  |  |  | Jon Williams | 1.5h | 1.5h | 37.25 | 37.25 |  |
| 107 | 2.2.1.10 | Resend Activation | 0.25d? | 2012-10-03 A | 2012-10-03 A | 106 | 100% |  |  |  |  | Jon Williams | 1.5h | 1.5h | 37.25 | 37.25 |  |
| 108 | 2.2.1.11 | Account Settings | 0.25d? | 2012-10-03 A | 2012-10-03 A | 107 | 100% |  |  |  |  | Jon Williams | 1.5h | 1.5h | 37.25 | 37.25 |  |
| 109 | 2.2.1.12 | Recover Password | 0.25d? | 2012-10-03 A | 2012-10-03 A | 108 | 100% |  |  |  |  | Jon Williams | 1.5h | 1.5h | 37.25 | 37.25 |  |
| 110 | 2.2.1.13 | About Us | 0.25d? | 2012-10-04 A | 2012-10-04 A | 109 | 100% |  |  |  |  | Jon Williams | 1.5h | 1.5h | 37.25 | 37.25 |  |
| 111 | 2.2.1.14 | **Profile** | 67.75d? | 2012-10-04 A | 2013-01-18 | 110 | 38% | 41.69d? | 26d | 0d |  |  | 19.5h | 7.5h | 484.19 | 186.22 |  |
| 112 | 2.2.1.14.1 | Profile | 1d? | 2012-10-04 A | 2012-10-05 A |  | 100% |  |  |  |  | Jon Williams | 6h | 6h | 148.98 | 148.98 |  |
| 113 | 2.2.1.14.2 | Edit profile | 0.25d? | 2012-10-04 A | 2012-10-04 A |  | 100% |  |  |  |  | Jon Williams | 1.5h | 1.5h | 37.25 | 37.25 |  |
| 114 | 2.2.1.14.3 | Add Funds to Wallet | 1d? | 2013-01-17 | 2013-01-17 |  |  |  | 27d |  | start no earlier than 2012-10-25 | Jon Williams | 6h |  | 148.98 |  |  |
| 115 | 2.2.1.14.4 | Credit Card Info | 1d? | 2013-01-18 | 2013-01-18 |  |  |  | 26d |  | start no earlier than 2012-10-25 | Jon Williams | 6h |  | 148.98 |  |  |
| 116 | 2.2.1.15 | Contact Us | 0.25d? | 2012-10-04 A | 2012-10-04 A | 113 | 100% |  |  |  |  | Jon Williams | 1.5h | 1.5h | 37.25 | 37.25 |  |
| 117 | 2.2.1.16 | Pricing | 0.25d? | 2012-10-25 | 2012-10-25 | 116 |  |  | 60d | 0d | start no earlier than 2012-10-25 | Jon Williams | 1.5h |  | 37.25 |  |  |
| 118 | 2.2.1.17 | Blog Pages | 0.25d? | 2012-10-01 A | 2012-10-01 A | 117 | 100% |  |  |  |  | Jon Williams | 1.5h | 1.5h | 37.25 | 37.25 |  |
| 119 | 2.2.1.18 | Overview Page | 0.25d? | 2012-10-17 | 2012-10-17 | 118 |  |  | 51d | 0d | start no earlier than 2012-10-17 | Jon Williams | 1.5h |  | 37.25 |  |  |
| 120 | 2.3 | **Docs** | 5d | 2012-11-08 | 2012-11-14 | 35 |  |  | 70d |  |  |  |  |  |  |  |  |
| 121 | 2.3.1 | Update Online/Video Docs for General Editor | 3d | 2012-11-08 | 2012-11-12 |  |  |  | 72d |  |  |  |  |  |  |  | MMGDCORE-629 |
| 122 | 2.3.2 | Create Online/Video Docs for Physics Launcher Template | 5d | 2012-11-08 | 2012-11-14 |  |  |  | 70d |  | start no earlier than 2012-10-22 |  |  |  |  |  | TSSPL-442 |

| ID | WBS | Task | Duration | Start | Finish | Predecessors | Complete | Remaining | Total slack | Resources | Work | Actual work | Cost | Actual cost |
| --- | --- | --- | --- | --- | --- | --- | --- | --- | --- | --- | --- | --- | --- | --- |
| 123 | 2.4 | **Web** | 87.5d | 2012-10-03 A | 2013-02-14 |  | 8% | 80.9d | 13.5d |  | 159h | 12h | 7,156.59 | 540.12 |
| 124 | 2.4.1 | **Website Re-skin** | 87.5d | 2012-10-03 A | 2013-02-14 |  | 8% | 80.9d | 13.5d |  | 159h | 12h | 7,156.59 | 540.12 |
| 125 | 2.4.1.1 | Slice and optimize PSDs | 2d | 2013-02-12 | 2013-02-13 | 53 |  |  | 14d | Zach Gambino | 12h |  | 540.12 |  |
| 126 | 2.4.1.2 | Build Core CSS | 2d | 2013-02-12 | 2013-02-13 | 53 |  |  | 14d | Zach Gambino | 12h |  | 540.12 |  |
| 127 | 2.4.1.3 | **Page by page breakdown** | 87.5d | 2012-10-03 A | 2013-02-14 |  | 9% | 79.72d | 13.5d |  | 135h | 12h | 6,076.35 | 540.12 |
| 128 | 2.4.1.3.1 | Homepage | 2d | 2012-10-03 A | 2012-11-05 | 54 | 38% | 1.25d | 77.75d | Zach Gambino | 12h | 4.5h | 540.12 | 202.54 |
| 129 | 2.4.1.3.2 | Marketplace | 5d | 2012-10-03 A | 2012-11-08 | 55 | 25% | 3.75d | 74d | Zach Gambino | 30h | 7.5h | 1,350.3 | 337.57 |
| 130 | 2.4.1.3.3 | Forum Pages | 4d | 2013-02-08 | 2013-02-14 | 56 |  |  | 13.5d | Zach Gambino | 24h |  | 1,080.24 |  |
| 131 | 2.4.1.3.4 | Help | 1d | 2013-02-12 | 2013-02-12 | 57 |  |  | 15d | Zach Gambino | 6h |  | 270.06 |  |
| 132 | 2.4.1.3.5 | Docs Pages | 2d | 2012-11-09 | 2012-11-12 | 58 |  |  | 72d | Zach Gambino | 12h |  | 540.12 |  |
| 133 | 2.4.1.3.6 | News | 1d | 2012-11-13 | 2012-11-13 | 59 |  |  | 71d | Zach Gambino | 6h |  | 270.06 |  |
| 134 | 2.4.1.3.7 | Sign In | 0.5d | 2012-11-14 | 2012-11-14 | 60 |  |  | 70.5d | Zach Gambino | 3h |  | 135.03 |  |
| 135 | 2.4.1.3.8 | Easy Access Sign Up | 0.5d | 2012-11-14 | 2012-11-14 | 61 |  |  | 70d | Zach Gambino | 3h |  | 135.03 |  |
| 136 | 2.4.1.3.9 | Resend Activation | 0.25d | 2012-11-15 | 2012-11-15 | 62 |  |  | 69.75d | Zach Gambino | 1.5h |  | 67.52 |  |
| 137 | 2.4.1.3.10 | Account Settings | 1d | 2012-11-15 | 2012-11-16 | 63 |  |  | 68.5d | Zach Gambino | 6h |  | 270.06 |  |
| 138 | 2.4.1.3.11 | Recover Password | 0.25d | 2012-11-16 | 2012-11-16 | 64 |  |  | 68.25d | Zach Gambino | 1.5h |  | 67.52 |  |
| 139 | 2.4.1.3.12 | About Us | 0.5d | 2012-11-19 | 2012-11-19 | 65 |  |  | 67.5d | Zach Gambino | 3h |  | 135.03 |  |
| 140 | 2.4.1.3.13 | Profile | 1d | 2013-01-22 | 2013-01-22 | 66 |  |  | 30d | Zach Gambino | 6h |  | 270.06 |  |
| 141 | 2.4.1.3.14 | Edit profile | 1d | 2012-11-20 | 2012-11-20 | 67 |  |  | 66d | Zach Gambino | 6h |  | 270.06 |  |
| 142 | 2.4.1.3.15 | Contact Us | 0.5d | 2012-11-21 | 2012-11-21 | 68 |  |  | 65.5d | Zach Gambino | 3h |  | 135.03 |  |
| 143 | 2.4.1.3.16 | Pricing | 0.5d | 2012-11-26 | 2012-11-26 | 69 |  |  | 64.5d | Zach Gambino | 3h |  | 135.03 |  |
| 144 | 2.4.1.3.17 | Blog Pages | 0.5d | 2012-12-03 | 2012-12-03 | 70 |  |  | 59.5d | Zach Gambino | 3h |  | 135.03 |  |
| 145 | 2.4.1.3.18 | Overview Page | 1d | 2012-12-05 | 2012-12-05 | 71 |  |  | 57d | Zach Gambino | 6h |  | 270.06 |  |
| 146 | 2.5 | **QA/Reaction** | 5d? | 2013-02-12 | 2013-02-19 | 52, 43 |  |  | 10.56d |  | 30h |  | 1,418.7 |  |
| 147 | 2.5.1 | Web site re-skin full pass | 5d? | 2013-02-12 | 2013-02-19 |  |  |  | 10.56d | Ray Mitchell | 30h |  | 1,418.7 |  |

| ID | WBS | Task | Duration | Start | Finish | Predecessors | Complete | Remaining | Total slack | Free slack | Constraint | Resources | Work | Actual work | Cost | Actual cost |
| --- | --- | --- | --- | --- | --- | --- | --- | --- | --- | --- | --- | --- | --- | --- | --- | --- |
| 148 | 3 | **Milestone 4: BJ/TD Updates, Art Packs, and Preproduction** | 103d? | 2012-10-01 A | 2013-03-05 |  | 4% | 98.76d? | 0d |  |  |  | 1774.74h | 54.66h | 54,577.8 | 1,902.32 |
| 149 | 3.1 | **Art** | 96d? | 2012-10-03 A | 2013-02-26 |  | 7% | 89.57d? | 0d |  |  |  | 771.66h | 51.66h | 22,865.39 | 1,767.29 |
| 150 | 3.1.1 | **Tower Defense Sci-fi Art Pack** | 96d? | 2012-10-03 A | 2013-02-26 |  | 7% | 89.57d? | 0d |  |  |  | 771.66h | 51.66h | 22,865.39 | 1,767.29 |
| 151 | 3.1.1.1 | Concept pre-production | 6.11d | 2012-10-03 A | 2012-10-23 A | 3 | 100% |  |  |  |  | Phill Belanger | 36.66h | 36.66h | 1,254.14 | 1,254.14 |
| 152 | 3.1.1.2 | Concepts - Alien creatures (4) | 30d? | 2012-11-01 | 2012-12-14 |  |  |  | 0d |  | start no earlier than 2012-11-01 | John Shuman | 180h |  | 6,699.6 |  |
| 153 | 3.1.1.3 | Tower creation | 5d | 2012-11-02 | 2012-11-08 | 151 |  |  | 44d | 0d | start no earlier than 2012-11-02 | Outsource | 30h |  |  |  |
| 154 | 3.1.1.4 | Towers and particle effects (5) | 25d | 2012-11-09 | 2012-12-17 | 153 |  |  | 44d |  | start no earlier than 2012-10-29 | Jesse Oliger | 150h |  | 4,897.5 |  |
| 155 | 3.1.1.5 | Mob creation (x1 characters) | 5d | 2012-12-17 | 2012-12-21 | 152, 153 |  |  | 35d | 0d |  | Outsource | 30h |  |  |  |
| 156 | 3.1.1.6 | Mob creation (x3 characters) | 25d? | 2012-12-17 | 2013-01-29 | 152 |  |  | 0d |  |  | John Shuman | 150h |  | 5,583 |  |
| 157 | 3.1.1.7 | Mob rig, skin and animation | 20d | 2013-01-30 | 2013-02-26 | 156 |  |  | 0d |  |  | Jesse Oliger | 120h |  | 3,918 |  |
| 158 | 3.1.1.8 | Environment art (background, decals) | 5d | 2013-01-02 | 2013-01-08 | 151, 155 |  |  | 35d |  |  | Outsource | 30h |  |  |  |
| 159 | 3.1.1.9 | GUI and menu concept pre-production | 2.5d | 2012-10-29 A | 2012-10-31 A | 151 | 100% |  |  |  |  | Phill Belanger | 15h | 15h | 513.15 | 513.15 |
| 160 | 3.1.1.10 | GUI and menu creation | 5d | 2012-11-01 | 2012-11-14 | 151 |  |  | 65d |  | start no earlier than 2012-11-01 | Outsource | 30h |  |  |  |
| 161 | 3.2 | **Code** | 42.18d | 2012-11-01 | 2013-01-11 |  |  |  | 32.82d |  |  |  | 565.08h |  | 18,350.23 |  |
| 162 | 3.2.1 | **Core** | 25.43d | 2012-11-05 | 2012-12-12 |  |  |  | 47.41d |  |  |  | 120h |  | 5,545.2 |  |
| 163 | 3.2.1.1 | iPhone 5/iOS 6 Support | 5d | 2012-11-05 | 2012-11-19 | 11 |  |  | 62.41d |  |  | Michael Perry | 30h |  | 1,386.3 |  |
| 164 | 3.2.1.2 | Carbon for Cocoa | 15d | 2012-11-19 | 2012-12-12 | 11 |  |  | 47.41d |  |  | Michael Perry | 90h |  | 4,158.9 |  |
| 165 | 3.2.2 | **Tower Defense Template** | 32.18d | 2012-11-15 | 2013-01-11 | 46 |  |  | 32.82d |  |  |  | 285.96h |  | 7,901.69 |  |
| 166 | 3.2.2.1 | Game Update | 14d | 2012-11-15 | 2012-12-06 |  |  |  | 51d |  |  | Richard Ranft | 84h |  | 1,905.12 |  |
| 167 | 3.2.2.2 | Levels Tool Update | 1.77d | 2013-01-09 | 2013-01-10 |  |  |  | 33d |  |  | Melv May | 10.62h |  | 370.53 |  |
| 168 | 3.2.2.3 | Terrain Tool Update | 10.89d | 2012-11-15 | 2012-12-03 |  |  |  | 54.11d |  |  | Melv May | 65.34h |  | 2,279.71 |  |
| 169 | 3.2.2.4 | Waves Tool Update | 5.33d | 2012-12-12 | 2012-12-20 |  |  |  | 41.82d |  |  | Richard Ranft | 31.98h |  | 725.31 |  |
| 170 | 3.2.2.5 | Enemies Tool Update | 3.67d | 2013-01-07 | 2013-01-11 |  |  |  | 32.82d |  |  | Richard Ranft | 22.02h |  | 499.41 |  |
| 171 | 3.2.2.6 | Towers Tool Update | 5.33d | 2012-12-20 | 2013-01-07 |  |  |  | 36.49d |  |  | Richard Ranft | 31.98h |  | 725.31 |  |
| 172 | 3.2.2.7 | Projectiles Tool Update | 2.67d | 2013-01-04 | 2013-01-09 |  |  |  | 34.77d |  |  | Melv May | 16.02h |  | 558.94 |  |
| 173 | 3.2.2.8 | Interface Tool Update | 4d | 2012-12-20 | 2013-01-04 |  |  |  | 37.44d |  |  | Melv May | 24h |  | 837.36 |  |

| ID | WBS | Task | Duration | Start | Finish | Predecessors | Complete | Remaining | Total slack | Constraint | Resources | Work | Actual work | Cost | Actual cost | JIRA Ticket |
| --- | --- | --- | --- | --- | --- | --- | --- | --- | --- | --- | --- | --- | --- | --- | --- | --- |
| 174 | 3.2.3 | **Blackjack Template** | 33.56d | 2012-11-01 | 2012-12-20 |  |  |  | 41.44d |  |  | 159.12h |  | 4,903.35 |  |  |
| 175 | 3.2.3.1 | Game Update | 9.89d | 2012-11-01 | 2012-12-10 |  |  |  | 49.22d | start no earlier than 2012-11-01 | Melv May | 59.34h |  | 2,070.37 |  |  |
| 176 | 3.2.3.2 | Table Tool Update | 1.85d | 2012-12-07 | 2012-12-10 |  |  |  | 49.15d | start no earlier than 2012-11-01 | Richard Ranft | 11.1h |  | 251.75 |  |  |
| 177 | 3.2.3.3 | Deck Tool Update | 7.78d | 2012-12-10 | 2012-12-20 |  |  |  | 41.44d |  | Melv May | 46.68h |  | 1,628.67 |  |  |
| 178 | 3.2.3.4 | NPCs Tool Update | 4.33d | 2012-11-01 | 2012-11-07 |  |  |  | 70.67d | start no earlier than 2012-11-01 | Richard Ranft | 25.98h |  | 589.23 |  |  |
| 179 | 3.2.3.5 | Interface Tool Update | 2.67d | 2012-11-07 | 2012-12-12 |  |  |  | 47.15d | start no earlier than 2012-11-01 | Richard Ranft | 16.02h |  | 363.33 |  |  |
| 180 | 3.3 | **Design** | 54d | 2012-11-01 | 2013-01-28 |  |  |  | 26d |  |  | 360h |  | 9,783 |  |  |
| 181 | 3.3.1 | **Preproduction for Platformer / Template Update?** | 54d | 2012-11-01 | 2013-01-28 |  |  |  | 26d |  |  | 360h |  | 9,783 |  |  |
| 182 | 3.3.1.1 | Concept Art | 15d | 2012-12-12 | 2013-01-11 |  |  |  | 37.22d | start no earlier than 2012-11-01 | Phill Belanger | 90h |  | 3,078.9 |  |  |
| 183 | 3.3.1.2 | Game Design | 20d | 2012-12-03 | 2013-01-08 |  |  |  | 40d | start no earlier than 2012-10-17 | Jon Williams | 120h |  | 2,979.6 |  |  |
| 184 | 3.3.1.3 | Tool Design | 20d | 2012-11-01 | 2012-11-30 |  |  |  | 60d | start no earlier than 2012-11-01 | Jon Williams | 120h |  | 2,979.6 |  |  |
| 185 | 3.3.1.4 | Marketplace | 5d | 2013-01-22 | 2013-01-28 |  |  |  | 26d |  | Jon Williams | 30h |  | 744.9 |  |  |
| 186 | 3.4 | **Docs** | 31.59d | 2012-10-01 A | 2012-11-13 | 4 | 18% | 25.93d | 66.41d |  |  |  |  |  |  |  |
| 187 | 3.4.1 | Create Hints and Tips and Tooltips for Tower Defense Template | 7.83d | 2012-10-01 A | 2012-11-06 |  | 51% | 3.83d | 71.17d |  |  |  |  |  |  | TSSTD-723 |
| 188 | 3.4.2 | Create Hints and Tips and Tooltips for Blackjack Template | 4.5d | 2012-11-06 | 2012-11-13 |  |  |  | 66.91d |  |  |  |  |  |  | TSSBJ-362 |
| 189 | 3.4.3 | Update Online/Video Docs for Tower Defense Template | 5d | 2012-11-06 | 2012-11-13 |  |  |  | 66.41d |  |  |  |  |  |  | TSSTD-732 |
| 190 | 3.4.4 | Update Online/Video Docs for Blackjack Template | 5d | 2012-11-06 | 2012-11-13 |  |  |  | 66.41d |  |  |  |  |  |  | TSSBJ-377 |
| 191 | 3.5 | **Web** | 43.5d | 2012-10-02 A | 2012-12-04 |  | 6% | 40.78d | 53d |  |  | 48h | 3h | 2,160.48 | 135.03 |  |
| 192 | 3.5.1 | Virtual Currency System | 4d | 2012-10-02 A | 2012-11-29 |  | 13% | 3.5d | 56.5d |  | Zach Gambino | 24h | 3h | 1,080.24 | 135.03 |  |
| 193 | 3.5.2 | Product Surveys | 2d | 2012-11-15 | 2012-11-30 |  |  |  | 55.5d | start no earlier than 2012-11-01 | Zach Gambino | 12h |  | 540.12 |  | MMGDCORE-492 |
| 194 | 3.5.3 | Offer system | 2d | 2012-11-30 | 2012-12-04 |  |  |  | 53d | start no earlier than 2012-11-01 | Zach Gambino | 12h |  | 540.12 |  | MMGDCORE-493 |
| 195 | 3.6 | **QA/Reaction** | 5d | 2013-02-27 | 2013-03-05 | 161 |  |  | 0d |  |  | 30h |  | 1,418.7 |  |  |
| 196 | 3.6.1 | Full Pass | 5d | 2013-02-27 | 2013-03-05 | 149, 186, 49, 191 |  |  | 0d |  | Ray Mitchell | 30h |  | 1,418.7 |  |  |
